# Lịch trình Sách Thiếu nhi

How a schedule from MS Project changed from version to version. A marks actual dates.

## Version 1 (saved 2025-09-27, file Advanced Tracking B_Start.mpp)

| ID | WBS | Task | Duration | Start | Finish | Predecessors | Complete | Total float | Constraint |
| --- | --- | --- | --- | --- | --- | --- | --- | --- | --- |
| 1 | 1 | **Họp ban biên tập** | 780.12d | 2012-04-23 08:00 A | 2015-04-20 09:00 |  | 15% | 158.75d |  |
| 2 |  | Họp ban biên tập 1 | 1h | 2015-04-13 08:00 A | 2015-04-13 09:00 A |  | 100% |  | start no earlier than 2015-04-13 08:00 |
| 3 |  | Họp ban biên tập 2 | 1h | 2015-04-20 08:00 A | 2015-04-20 09:00 A |  | 100% |  | start no earlier than 2015-04-20 08:00 |
| 4 |  | Họp ban biên tập 3 | 1h | 2012-04-23 08:00 | 2012-04-23 09:00 |  |  | 938.75d | start no earlier than 2012-04-23 08:00 |
| 5 |  | Họp ban biên tập 4 | 1h | 2012-04-30 08:00 | 2012-04-30 09:00 |  |  | 933.75d | start no earlier than 2012-04-30 08:00 |
| 6 |  | Họp ban biên tập 5 | 1h | 2012-05-07 08:00 | 2012-05-07 09:00 |  |  | 928.75d | start no earlier than 2012-05-07 08:00 |
| 7 |  | Họp ban biên tập 6 | 1h | 2012-05-14 08:00 | 2012-05-14 09:00 |  |  | 923.75d | start no earlier than 2012-05-14 08:00 |
| 8 |  | Họp ban biên tập 7 | 1h | 2012-05-21 08:00 | 2012-05-21 09:00 |  |  | 918.75d | start no earlier than 2012-05-21 08:00 |
| 9 |  | Họp ban biên tập 8 | 1h | 2012-05-28 08:00 | 2012-05-28 09:00 |  |  | 913.75d | start no earlier than 2012-05-28 08:00 |
| 10 |  | Họp ban biên tập 9 | 1h | 2012-06-04 08:00 | 2012-06-04 09:00 |  |  | 908.75d | start no earlier than 2012-06-04 08:00 |
| 11 |  | Họp ban biên tập 10 | 1h | 2012-06-11 08:00 | 2012-06-11 09:00 |  |  | 903.75d | start no earlier than 2012-06-11 08:00 |
| 12 |  | Họp ban biên tập 11 | 1h | 2012-06-18 08:00 | 2012-06-18 09:00 |  |  | 898.75d | start no earlier than 2012-06-18 08:00 |
| 13 |  | Họp ban biên tập 12 | 1h | 2012-06-25 08:00 | 2012-06-25 09:00 |  |  | 893.75d | start no earlier than 2012-06-25 08:00 |
| 14 |  | Họp ban biên tập 13 | 1h | 2012-07-02 08:00 | 2012-07-02 09:00 |  |  | 888.75d | start no earlier than 2012-07-02 08:00 |
| 15 | 2 | **Tiếp nhận bản thảo** | 35.5d | 2015-04-06 08:00 A | 2015-05-25 12:00 |  | 58% | 0d |  |
| 16 |  | Đã nhận bản thảo | 0d | 2015-04-06 08:00 A | 2015-04-06 08:00 A |  | 100% |  |  |
| 17 |  | Biên tập nội dung | 15d | 2015-04-06 08:00 A | 2015-04-30 10:00 A | 16 | 100% |  |  |
| 18 |  | Đánh giá bản vẽ gốc | 10.25d | 2015-04-23 10:00 A | 2015-05-07 12:00 | 17FS-5d | 66% | 0d |  |
| 19 |  | Tác giả xem lại bản biên tập nội dung | 12d | 2015-05-07 13:00 | 2015-05-25 12:00 | 17, 18 |  | 0d |  |
| 20 |  | Bàn giao cho Ban Biên tập | 0d | 2015-05-25 12:00 | 2015-05-25 12:00 | 19 |  | 0d |  |
| 21 | 3 | **Biên tập** | 29.12d | 2015-05-25 13:00 | 2015-07-03 14:00 | 15 |  | 0d |  |
| 22 |  | Sắp xếp bản thảo để sửa bản in | 5.12d | 2015-05-25 13:00 | 2015-06-01 14:00 |  |  | 0d |  |
| 23 |  | Sửa bản in | 11.25d | 2015-06-01 14:00 | 2015-06-16 16:00 | 22 |  | 0d |  |
| 24 |  | Tác giả xem lại bản sửa in | 10d | 2015-06-16 16:00 | 2015-06-30 16:00 | 23 |  | 0d |  |
| 25 |  | Tổng hợp các chỉnh sửa bản in | 5.12d | 2015-06-26 11:00 | 2015-07-03 14:00 | 24FS-2.5% |  | 0d |  |
| 26 |  | Bàn giao cho Bộ phận Sản xuất | 0d | 2015-07-03 14:00 | 2015-07-03 14:00 | 25 |  | 0d |  |
| 27 | 4 | **Thiết kế và Sản xuất** | 58.25d | 2015-07-03 14:00 | 2015-09-23 16:00 | 21 |  | 0d |  |
| 28 |  | Dàn trang | 15d | 2015-07-03 14:00 | 2015-07-24 14:00 |  |  | 0d |  |
| 29 |  | Thiết kế minh họa bên trong | 15.25d | 2015-07-03 14:00 | 2015-07-24 16:00 | 28SS |  | 0d |  |
| 30 | 4.3 | **Xem lại bản dàn trang lần 1** | 30d | 2015-07-24 16:00 | 2015-09-04 16:00 | 29 |  | 0d |  |
| 31 |  | Đọc soát lỗi và lập chỉ mục | 10d | 2015-07-24 16:00 | 2015-08-07 16:00 |  |  | 0d | start no earlier than 2015-07-17 08:00 |
| 32 |  | Tổng hợp các chỉnh sửa từ lần xem lại 1 | 10d | 2015-08-07 16:00 | 2015-08-21 16:00 | 31 |  | 0d |  |
| 33 |  | Gửi các trang đã soát lỗi cho Sản xuất | 0d | 2015-08-21 16:00 | 2015-08-21 16:00 | 32 |  | 0d |  |
| 34 |  | Nhập các chỉnh sửa trang và chỉ mục | 5d | 2015-08-21 16:00 | 2015-08-28 16:00 | 33 |  | 0d |  |
| 35 |  | Thiết kế bìa | 5d | 2015-08-28 16:00 | 2015-09-04 16:00 | 34 |  | 0d |  |
| 36 | 4.4 | **Xem lại bản dàn trang lần 2** | 13d | 2015-09-04 16:00 | 2015-09-23 16:00 |  |  | 0d |  |
| 37 |  | Đọc soát lỗi và xem lại | 6.5d | 2015-09-04 16:00 | 2015-09-15 11:00 | 35 |  | 0d |  |
| 38 |  | Gửi các trang đã soát lỗi cho Sản xuất | 0d | 2015-09-15 11:00 | 2015-09-15 11:00 | 37 |  | 0d |  |
| 39 |  | Xem lại lần cuối | 5d | 2015-09-16 16:00 | 2015-09-23 16:00 | 38 |  | 0d |  |
| 40 | 4.5 | **Thiết kế website đi kèm sách** | 10d | 2015-09-04 16:00 | 2015-09-18 16:00 | 30 |  | 3d |  |
| 41 |  | Tạo bản thiết kế mẫu | 4.5d | 2015-09-04 16:00 | 2015-09-16 16:00 |  |  | 3d |  |
| 42 |  | Xem lại cùng tác giả | 2d | 2015-09-16 16:00 | 2015-09-18 16:00 | 41 |  | 3d |  |
| 43 | 5 | **Chuẩn bị màu và In ấn** | 46d | 2015-09-23 16:00 | 2015-11-26 16:00 | 40 |  | 0d |  |
| 44 |  | Gửi đến nhà màu | 1d | 2015-09-23 16:00 | 2015-09-28 16:00 | 36 |  | 0d |  |
| 45 |  | Tạo bản in thử | 10d | 2015-09-28 16:00 | 2015-10-12 16:00 | 44 |  | 0d |  |
| 46 |  | In và vận chuyển | 30d | 2015-10-15 16:00 | 2015-11-26 16:00 | 45FS+3d |  | 0d |  |
| 47 | 6 | **Chuẩn bị ra mắt sách** | 22d | 2015-09-28 16:00 | 2015-10-28 16:00 |  |  | 21d |  |
| 48 |  | Lên kế hoạch ra mắt | 5d | 2015-09-28 16:00 | 2015-10-05 16:00 | 44 |  | 21d |  |
| 49 |  | Phân công thành viên đội ra mắt | 1d | 2015-10-05 16:00 | 2015-10-06 16:00 | 48 |  | 21d |  |
| 50 |  | Hoàn thành bảng câu hỏi cho tác giả | 5d | 2015-10-06 16:00 | 2015-10-13 16:00 | 49 |  | 21d |  |
| 51 |  | Lên lịch phỏng vấn tác giả | 1d | 2015-10-13 16:00 | 2015-10-14 16:00 | 50 |  | 21d |  |
| 52 |  | Thiết kế và đặt hàng tài liệu tiếp thị | 10d | 2015-10-14 16:00 | 2015-10-28 16:00 | 51 |  | 21d |  |

## Version 2 (saved 2025-09-27, file Advanced Tracking C_Start.mpp)

Last finish stays 2015-11-26. Complete tasks 4 → 12.

Changed:

| ID | Task | Start | Finish | Duration | Complete | Total float | Other |
| --- | --- | --- | --- | --- | --- | --- | --- |
| 1 | **Họp ban biên tập** | 2012-04-23 08:00 A → 2015-04-13 08:00 A (+1085d) | 2015-04-20 09:00 → 2015-07-06 09:00 (+77d) | 780.12d → 60.12d | 15% → 54% | 158.75d → 103.88d |  |
| 2 | Editorial staff meeting 1 |  |  |  |  |  | was named Họp ban biên tập 1 |
| 3 | Editorial staff meeting 2 |  |  |  |  |  | was named Họp ban biên tập 2 |
| 4 | Editorial staff meeting 3 | 2012-04-23 08:00 → 2015-04-27 08:00 A (+1099d) | 2012-04-23 09:00 → 2015-04-27 09:00 A (+1099d) |  | 0% → 100% | 938.75d → none | was named Họp ban biên tập 3; constraint start no earlier than 2012-04-23 08:00 → start no earlier than 2015-04-27 08:00 |
| 5 | Editorial staff meeting 4 | 2012-04-30 08:00 → 2015-05-04 08:00 A (+1099d) | 2012-04-30 09:00 → 2015-05-04 09:00 A (+1099d) |  | 0% → 100% | 933.75d → none | was named Họp ban biên tập 4; constraint start no earlier than 2012-04-30 08:00 → start no earlier than 2015-05-04 08:00 |
| 6 | Editorial staff meeting 5 | 2012-05-07 08:00 → 2015-05-11 08:00 A (+1099d) | 2012-05-07 09:00 → 2015-05-11 09:00 A (+1099d) |  | 0% → 100% | 928.75d → none | was named Họp ban biên tập 5; constraint start no earlier than 2012-05-07 08:00 → start no earlier than 2015-05-11 08:00 |
| 7 | Editorial staff meeting 6 | 2012-05-14 08:00 → 2015-05-18 08:00 A (+1099d) | 2012-05-14 09:00 → 2015-05-18 09:00 A (+1099d) |  | 0% → 100% | 923.75d → none | was named Họp ban biên tập 6; constraint start no earlier than 2012-05-14 08:00 → start no earlier than 2015-05-18 08:00 |
| 8 | Editorial staff meeting 7 | 2012-05-21 08:00 → 2015-05-25 08:00 A (+1099d) | 2012-05-21 09:00 → 2015-05-25 09:00 A (+1099d) |  | 0% → 100% | 918.75d → none | was named Họp ban biên tập 7; constraint start no earlier than 2012-05-21 08:00 → start no earlier than 2015-05-25 08:00 |
| 9 | Editorial staff meeting 8 | 2012-05-28 08:00 → 2015-06-01 08:00 (+1099d) | 2012-05-28 09:00 → 2015-06-01 09:00 (+1099d) |  |  | 913.75d → 128.88d | was named Họp ban biên tập 8; constraint start no earlier than 2012-05-28 08:00 → start no earlier than 2015-06-01 08:00 |
| 10 | Editorial staff meeting 9 | 2012-06-04 08:00 → 2015-06-08 08:00 (+1099d) | 2012-06-04 09:00 → 2015-06-08 09:00 (+1099d) |  |  | 908.75d → 123.88d | was named Họp ban biên tập 9; constraint start no earlier than 2012-06-04 08:00 → start no earlier than 2015-06-08 08:00 |
| 11 | Editorial staff meeting 10 | 2012-06-11 08:00 → 2015-06-15 08:00 (+1099d) | 2012-06-11 09:00 → 2015-06-15 09:00 (+1099d) |  |  | 903.75d → 118.88d | was named Họp ban biên tập 10; constraint start no earlier than 2012-06-11 08:00 → start no earlier than 2015-06-15 08:00 |
| 12 | Editorial staff meeting 11 | 2012-06-18 08:00 → 2015-06-22 08:00 (+1099d) | 2012-06-18 09:00 → 2015-06-22 09:00 (+1099d) |  |  | 898.75d → 113.88d | was named Họp ban biên tập 11; constraint start no earlier than 2012-06-18 08:00 → start no earlier than 2015-06-22 08:00 |
| 13 | Editorial staff meeting 12 | 2012-06-25 08:00 → 2015-06-29 08:00 (+1099d) | 2012-06-25 09:00 → 2015-06-29 09:00 (+1099d) |  |  | 893.75d → 108.88d | was named Họp ban biên tập 12; constraint start no earlier than 2012-06-25 08:00 → start no earlier than 2015-06-29 08:00 |
| 14 | Editorial staff meeting 13 | 2012-07-02 08:00 → 2015-07-06 08:00 (+1099d) | 2012-07-02 09:00 → 2015-07-06 09:00 (+1099d) |  |  | 888.75d → 103.88d | was named Họp ban biên tập 13; constraint start no earlier than 2012-07-02 08:00 → start no earlier than 2015-07-06 08:00 |
| 15 | **Tiếp nhận bản thảo** |  | 2015-05-25 12:00 → 2015-05-26 17:00 A (+1d) | 35.5d → 37d | 58% → 100% | 0d → none |  |
| 17 | Biên tập nội dung |  |  |  |  |  | resources Hoàng Thanh Trà → Đánh giá bản vẽ gốc |
| 18 | Đánh giá bản vẽ gốc |  | 2015-05-07 12:00 A |  | 66% → 100% | 0d → none | resources Kiều; My → Hany Morcos; Jane Dow |
| 19 | Tác Giả xem lại bản biên tập nội dung | 2015-05-07 13:00 A | 2015-05-25 12:00 → 2015-05-26 17:00 A (+1d) | 12d → 13.5d | 0% → 100% | 0d → none | was named Tác giả xem lại bản biên tập nội dung; resources Khương; Vy → Tad Orman; Copyeditors |
| 20 | Bàn giao cho ban biên tập | 2015-05-25 12:00 → 2015-05-26 17:00 A (+1d) | 2015-05-25 12:00 → 2015-05-26 17:00 A (+1d) |  | 0% → 100% | 0d → none | was named Bàn giao cho Ban Biên tập; resources Hoàng Thanh Trà → Carole Poland |
| 21 | **Biên tập** | 2015-05-25 13:00 → 2015-05-27 08:00 A (+2d) | 2015-07-03 14:00 → 2015-07-07 15:00 (+4d) | 29.12d → 29.75d | 0% → 2% |  |  |
| 22 | Sắp xếp bản thảo để sửa bản in | 2015-05-25 13:00 → 2015-05-27 08:00 A (+2d) | 2015-06-01 14:00 → 2015-06-02 17:00 (+1d) | 5.12d → 5d | 0% → 15% |  | resources Kiều; Xinh [50%] → Hany Morcos; Dan Jump [50%] |
| 23 | Sửa bản in | 2015-06-01 14:00 → 2015-06-03 08:00 (+2d) | 2015-06-16 16:00 → 2015-06-18 17:00 (+2d) | 11.25d → 11.5d |  |  | resources Vy [200%] → Copyeditors [200%] |
| 24 | Tác giả xem lại bản sửa im | 2015-06-16 16:00 → 2015-06-19 08:00 (+3d) | 2015-06-30 16:00 → 2015-07-02 17:00 (+2d) |  |  |  | was named Tác giả xem lại bản sửa in; resources Khương; Vy [25%] → Tad Orman; Copyeditors [25%] |
| 25 | Tổng hợp các chỉnh sửa bản in | 2015-06-26 11:00 → 2015-06-30 13:00 (+4d) | 2015-07-03 14:00 → 2015-07-07 15:00 (+4d) |  |  |  | resources Hoàng Thanh Trà; Xinh [50%] → Carole Poland; Dan Jump [50%] |
| 26 | Bàn giao cho bộ phận sản xuất | 2015-07-03 14:00 → 2015-07-07 15:00 (+4d) | 2015-07-03 14:00 → 2015-07-07 15:00 (+4d) |  |  |  | was named Bàn giao cho Bộ phận Sản xuất; resources Kiều → Hany Morcos |
| 27 | **thiết kế và sản xuất** | 2015-07-03 14:00 → 2015-07-07 15:00 (+4d) | 2015-09-23 16:00 → 2015-09-25 17:00 (+2d) |  |  |  | was named Thiết kế và Sản xuất |
| 28 | dàn trang | 2015-07-03 14:00 → 2015-07-07 15:00 (+4d) | 2015-07-24 14:00 → 2015-07-28 15:00 (+4d) |  |  |  | was named Dàn trang; resources My → Jane Dow |
| 29 | Thiết kế minh họa bên trong | 2015-07-03 14:00 → 2015-07-07 15:00 (+4d) | 2015-07-24 16:00 → 2015-07-28 17:00 (+4d) |  |  |  | resources Kiều; Tiên → Luis Sousa; Hany Morcos |
| 30 | **Xem lại bản dàn trang lần 1** | 2015-07-24 16:00 → 2015-07-29 08:00 (+5d) | 2015-09-04 16:00 → 2015-09-08 17:00 (+4d) |  |  |  |  |
| 31 | Đọc soát lỗi và lập chỉ mục | 2015-07-24 16:00 → 2015-07-29 08:00 (+5d) | 2015-08-07 16:00 → 2015-08-11 17:00 (+4d) |  |  |  | resources Khương; Vy → Tad Orman; Copyeditors |
| 32 | Tổng hợp các chỉnh sửa từ lần xem lại 1 | 2015-08-07 16:00 → 2015-08-12 08:00 (+5d) | 2015-08-21 16:00 → 2015-08-25 17:00 (+4d) |  |  |  | resources Kiều; Xinh [50%] → Hany Morcos; Dan Jump [50%] |
| 33 | Gửi các trang đã soát lỗi cho Sản xuất | 2015-08-21 16:00 → 2015-08-25 17:00 (+4d) | 2015-08-21 16:00 → 2015-08-25 17:00 (+4d) |  |  |  | resources Kiều → Hany Morcos |
| 34 | Nhập các chỉnh sửa trang và chỉ mục | 2015-08-21 16:00 → 2015-08-26 08:00 (+5d) | 2015-08-28 16:00 → 2015-09-01 17:00 (+4d) |  |  |  | resources My; Xinh [50%] → Jane Dow; Dan Jump [50%] |
| 35 | Thiết kế bìa | 2015-08-28 16:00 → 2015-09-02 08:00 (+5d) | 2015-09-04 16:00 → 2015-09-08 17:00 (+4d) |  |  |  | resources Tiên → Luis Sousa |
| 36 | **Xem lại bản dàn trang lần 2** | 2015-09-04 16:00 → 2015-09-09 08:00 (+5d) | 2015-09-23 16:00 → 2015-09-25 17:00 (+2d) |  |  |  |  |
| 37 | Đọc soát lỗi và xem lại | 2015-09-04 16:00 → 2015-09-09 08:00 (+5d) | 2015-09-15 11:00 → 2015-09-17 12:00 (+2d) |  |  |  | resources Kiều → Hany Morcos |
| 38 | Gửi các trang đã soát lỗi cho Sản xuất | 2015-09-15 11:00 → 2015-09-17 12:00 (+2d) | 2015-09-15 11:00 → 2015-09-17 12:00 (+2d) |  |  |  | resources Kiều → Hany Morcos |
| 39 | Xem lại lần cuối | 2015-09-16 16:00 → 2015-09-21 08:00 (+5d) | 2015-09-23 16:00 → 2015-09-25 17:00 (+2d) |  |  |  | resources Hoàng Thanh Trà [50%]; Kiều [50%]; My; Linh [20 copies] → Jane Dow; Hany Morcos [50%]; Carole Poland [50%]; Bound galley proofs [20 copies] |
| 40 | **Thiết kế website đi kèm sách** | 2015-09-04 16:00 → 2015-09-09 08:00 (+5d) | 2015-09-18 16:00 → 2015-09-22 17:00 (+4d) |  |  |  |  |
| 41 | Tạo bản thiết kế mẫu | 2015-09-04 16:00 → 2015-09-09 08:00 (+5d) | 2015-09-16 16:00 → 2015-09-18 17:00 (+2d) |  |  |  | resources Kiều; Tiên → Luis Sousa; Hany Morcos |
| 42 | Xem lại cùng tác giả | 2015-09-16 16:00 → 2015-09-21 08:00 (+5d) | 2015-09-18 16:00 → 2015-09-22 17:00 (+4d) |  |  |  | resources Travel [0.1%]; Khương; Xinh [50%]; Tiên → Luis Sousa; Tad Orman; Travel [0.1%]; Dan Jump [50%] |
| 43 | **Chuẩn bị màu và In ấn** | 2015-09-23 16:00 → 2015-09-28 08:00 (+5d) | 2015-11-26 16:00 → 2015-11-26 17:00 | 46d → 44d |  |  |  |
| 44 | Gửi đến nhà màu | 2015-09-23 16:00 → 2015-09-28 08:00 (+5d) | 2015-09-28 16:00 → 2015-09-28 17:00 |  |  |  | resources Kiều → Hany Morcos |
| 45 | Tạo bản in thử | 2015-09-28 16:00 → 2015-09-29 08:00 (+1d) | 2015-10-12 16:00 → 2015-10-12 17:00 |  |  |  |  |
| 46 | In và vận chuyển | 2015-10-15 16:00 → 2015-10-16 08:00 (+1d) | 2015-11-26 16:00 → 2015-11-26 17:00 |  |  |  |  |
| 47 | **Chuẩn bị ra mắt sách** | 2015-09-28 16:00 → 2015-09-29 08:00 (+1d) | 2015-10-28 16:00 → 2015-10-28 17:00 |  |  |  |  |
| 48 | Lên kế hoạch ra mắt | 2015-09-28 16:00 → 2015-09-29 08:00 (+1d) | 2015-10-05 16:00 → 2015-10-05 17:00 |  |  |  | resources Hoàng Thanh Trà [50%]; My → Carole Poland [50%]; Jane Dow |
| 49 | Phân công thành viên đội ra mắt | 2015-10-05 16:00 → 2015-10-06 08:00 (+1d) | 2015-10-06 16:00 → 2015-10-06 17:00 |  |  |  | resources Hoàng Thanh Trà → Carole Poland |
| 50 | Hoàn thành bảng câu hỏi cho tác giả | 2015-10-06 16:00 → 2015-10-07 08:00 (+1d) | 2015-10-13 16:00 → 2015-10-13 17:00 |  |  |  | resources Travel [0.1%]; Kiều; Khương → Hany Morcos; Tad Orman; Travel [0.1%] |
| 51 | Lên lịch phỏng vấn tác giả | 2015-10-13 16:00 → 2015-10-14 08:00 (+1d) | 2015-10-14 16:00 → 2015-10-14 17:00 |  |  |  | resources Kiều → Hany Morcos |
| 52 | Thiết kế và đặt hàng tài liệu tiếp thị | 2015-10-14 16:00 → 2015-10-15 08:00 (+1d) | 2015-10-28 16:00 → 2015-10-28 17:00 |  |  |  | resources Kiều → Hany Morcos |
